# 猜一猜V1.1.0进度表

Schedule from MS Project, 2017-08-04 to 2017-08-23, A marks actual dates.

## Calendars

- 标准: Mon-Fri 08:00-12:00, 13:00-17:00; Sat-Sun off.

## Resources

| Resource |
| --- |
| 阳光 |
| 小胖 |
| 小吴 |
| 小冯 |
| 小旺 |
| 小虎 |
| 梅琴 |

## Schedule

| ID | WBS | Task | Type | Duration | Start | Finish | Complete | Remaining | Baseline start | Baseline finish | Baseline duration | Total slack | Resources | Work | Actual work |
| --- | --- | --- | --- | --- | --- | --- | --- | --- | --- | --- | --- | --- | --- | --- | --- |
| 1 | 1 | **猜一猜V1.2** |  | 14d | 2017-08-04 A | 2017-08-23 | 83% | 2.44d | 2017-08-04 | 2017-08-14 | 7d | 0d |  | 332h | 261h |
| 2 | 1.1 | **后台** |  | 11d | 2017-08-04 A | 2017-08-18 | 90% | 1.08d | 2017-08-04 | 2017-08-12 | 6d | 0d |  | 196h | 184h |
| 3 | 1.1.1 | 数据库 | manual | 1d | 2017-08-04 A | 2017-08-04 A | 100% |  | 2017-08-04 | 2017-08-04 | 1d |  | 阳光 | 8h | 8h |
| 4 | 1.1.2 | **NodeJS** |  | 8d | 2017-08-07 A | 2017-08-16 | 98% | 0.14d | 2017-08-07 | 2017-08-12 | 5d | 0d |  | 116h | 114h |
| 5 | 1.1.2.1 | 个人资料 | manual | 2d | 2017-08-07 A | 2017-08-08 A | 100% |  | 2017-08-07 | 2017-08-07 | 0.5d |  | 小胖 | 16h | 16h |
| 6 | 1.1.2.2 | 金币金豆明细 | manual | 1d | 2017-08-08 A | 2017-08-08 A | 100% |  | 2017-08-07 | 2017-08-07 | 0.5d |  | 小胖 | 8h | 8h |
| 7 | 1.1.2.3 | 今日盈亏 | inactive, manual | 0.5d | 2017-08-07 | 2017-08-07 |  |  | 2017-08-07 | 2017-08-07 | 0.5d |  | 小胖 | 4h |  |
| 8 | 1.1.2.4 | 下注 | manual | 1d | 2017-08-09 A | 2017-08-09 A | 100% |  | 2017-08-07 | 2017-08-07 | 0.5d |  | 小胖 | 8h | 8h |
| 9 | 1.1.2.5 | 发布及转发 | manual | 1d | 2017-08-08 A | 2017-08-08 | 75% | 0.25d | 2017-08-08 | 2017-08-08 | 1d |  | 小胖 | 8h | 6h |
| 10 | 1.1.2.6 | 竞猜列表调整 | manual | 0.5d | 2017-08-09 A | 2017-08-09 A | 100% |  | 2017-08-09 | 2017-08-09 | 0.5d |  | 小胖 | 4h | 4h |
| 11 | 1.1.2.7 | 竞猜详情调整 | manual | 0.5d | 2017-08-09 A | 2017-08-09 A | 100% |  | 2017-08-09 | 2017-08-09 | 0.5d |  | 小胖 | 4h | 4h |
| 12 | 1.1.2.8 | 已猜玩家列表 | manual | 2d | 2017-08-09 A | 2017-08-10 A | 100% |  | 2017-08-09 | 2017-08-09 | 0.5d |  | 小胖 | 16h | 16h |
| 13 | 1.1.2.9 | 举报 | manual | 4d | 2017-08-11 A | 2017-08-16 A | 100% |  | 2017-08-08 | 2017-08-08 | 0.5d |  | 小吴 | 32h | 32h |
| 14 | 1.1.2.10 | 每日任务 | manual | 1d | 2017-08-08 A | 2017-08-08 A | 100% |  | 2017-08-08 | 2017-08-08 | 1d |  | 小吴 | 8h | 8h |
| 15 | 1.1.2.11 | 成长任务 | manual | 1d | 2017-08-09 A | 2017-08-09 A | 100% |  | 2017-08-09 | 2017-08-09 | 1d |  | 小吴 | 8h | 8h |
| 16 | 1.1.2.12 | 领取任务奖励 | manual | 0.5d | 2017-08-10 A | 2017-08-10 A | 100% |  | 2017-08-10 | 2017-08-10 | 0.5d |  | 小吴 | 4h | 4h |
| 17 | 1.1.3 | **JAVA API** |  | 7d | 2017-08-10 A | 2017-08-18 | 86% | 0.97d | 2017-08-10 | 2017-08-11 | 1.5d | 0d |  | 72h | 62h |
| 18 | 1.1.3.1 | 手动开奖 | manual | 3d | 2017-08-14 A | 2017-08-16 A | 100% |  | 2017-08-10 | 2017-08-10 | 1d |  | 小胖 | 24h | 24h |
| 19 | 1.1.3.2 | 自动开奖 | manual | 1d | 2017-08-16 A | 2017-08-16 A | 100% |  | 2017-08-11 | 2017-08-11 | 0.5d |  | 小胖 | 8h | 8h |
| 20 | 1.1.3.3 | 超时开奖 | manual | 2d | 2017-08-17 A | 2017-08-18 | 75% | 0.5d | 2017-08-11 | 2017-08-11 | 0.5d |  | 小胖 | 16h | 12h |
| 21 | 1.1.3.4 | 任务中心 | manual | 3d | 2017-08-10 A | 2017-08-12 | 75% | 0.75d | 2017-08-10 | 2017-08-12 | 3d |  | 小吴 | 24h | 18h |
| 22 | 1.1.4 | **管理后台** |  | 1d | 2017-08-04 | 2017-08-04 |  |  | 2017-08-04 | 2017-08-04 | 1d | 0d |  |  |  |
| 23 | 1.1.4.1 | 待定 | manual | 1d? | 2017-08-04 | 2017-08-04 |  |  | 2017-08-04 | 2017-08-04 | 1d? |  |  |  |  |
| 24 | 1.2 | **前端** |  | 10d | 2017-08-04 A | 2017-08-17 | 88% | 1.25d | 2017-08-04 | 2017-08-14 | 7d | 0d |  | 88h | 77h |
| 25 | 1.2.1 | 下注确认 | manual | 1d | 2017-08-04 A | 2017-08-04 A | 100% |  | 2017-08-04 | 2017-08-04 | 1d |  | 小冯 | 8h | 8h |
| 26 | 1.2.2 | 金豆金币下注 | manual | 0.5d | 2017-08-08 | 2017-08-08 |  |  | 2017-08-08 | 2017-08-08 | 0.5d |  | 小冯 | 4h |  |
| 27 | 1.2.3 | 发布及转发 | manual | 1d | 2017-08-09 A | 2017-08-09 | 75% | 0.25d | 2017-08-09 | 2017-08-09 | 1d |  | 小冯 | 8h | 6h |
| 28 | 1.2.4 | 详情页 | manual | 2d | 2017-08-10 A | 2017-08-11 A | 100% |  | 2017-08-10 | 2017-08-11 | 2d |  | 小冯 | 16h | 16h |
| 29 | 1.2.5 | 每日任务 | manual | 2d | 2017-08-15 A | 2017-08-16 A | 100% |  | 2017-08-12 | 2017-08-12 | 1d |  | 小冯; 小旺 | 16h | 16h |
| 30 | 1.2.6 | 成长任务 | manual | 2d | 2017-08-16 A | 2017-08-17 A | 100% |  | 2017-08-14 | 2017-08-14 | 1d |  | 小冯; 小旺 | 16h | 16h |
| 31 | 1.2.7 | 已猜玩家列表 | manual | 1d | 2017-08-10 A | 2017-08-10 | 75% | 0.25d | 2017-08-10 | 2017-08-10 | 1d |  | 小旺 | 8h | 6h |
| 32 | 1.2.8 | 我的结构调整 | manual | 0.5d | 2017-08-08 A | 2017-08-08 | 75% | 0.12d | 2017-08-08 | 2017-08-08 | 0.5d |  | 小旺 | 4h | 3h |
| 33 | 1.2.9 | 我的金豆 | manual | 0.5d | 2017-08-08 A | 2017-08-08 | 75% | 0.12d | 2017-08-08 | 2017-08-08 | 0.5d |  | 小旺 | 4h | 3h |
| 34 | 1.2.10 | 金豆明细 | manual | 0.5d | 2017-08-09 A | 2017-08-09 | 75% | 0.12d | 2017-08-09 | 2017-08-09 | 0.5d |  | 小旺 | 4h | 3h |
| 35 | 1.2.11 | 今日盈亏 | inactive, manual | 0.5d | 2017-08-09 | 2017-08-09 |  |  | 2017-08-09 | 2017-08-09 | 0.5d |  | 小旺 | 4h |  |
| 36 | 1.3 | 测试 | manual | 3d | 2017-08-21 | 2017-08-23 |  |  | 2017-08-15 | 2017-08-18 | 3d |  | 小虎; 梅琴 | 48h |  |

Notes:
- 5: 增加我的金豆、特约用户
- 6: 参数加flag（0：所有 1：只查金币 2：只查金豆）
- 7: 参数加flag（0：所有 1：只查金币 2：只查金豆）
- 8: 增加金豆下注需校验
- 9: 增加字段（私密发布、接受金豆、手动开奖、下注截止、默认答案图）
- 10: 增加标志（平台发布、接受金豆）、私密发布不展示
- 11: 增加标志（平台发布、私密发布、接受金豆）
- 12: 把明细记录合计后给出
- 13: 新增
- 14: 新增、根据任务规则 修改相应的接口
- 15: 新增、根据任务规则 修改相应的接口
- 16: 新增接口
- 18: 现有接口逻辑调整
- 19: 现有接口逻辑调整
- 20: 平分金币、保留一位小数、除不尽的留给庄家
- 27: 后台还有BUG
- 29: 需求变更，UI要重做
- 30: 需求变更，UI要重做
